# MDSS

Schedule from MS Project, 2009-02-02 to 2009-06-30, costs in USD, A marks actual dates.
Misty Heights
Test site is available

## Calendars

- Standard: Mon-Fri 08:00-12:00, 13:00-17:00; Sat-Sun off.

## Resources

| Resource | Group | Rate |
| --- | --- | --- |
| Nathan | Terra Frame | 115 |
| Thomas (Oz) | Terra Frame | 115 |
| Justin | Terra Frame | 115 |
| Darrell | Terra Frame | 115 |
| MRC | Supplier |  |
| Naifeh | Terra Frame |  |
| Marlize | Project |  |
| Mike | Project |  |
| Eric | Terra Frame |  |
| TBD | Terra Frame | 115 |
| Saul | Project |  |
| Sanika | Project |  |
| Lars | Project |  |
| Miguel | Project |  |
| Dave | Project |  |

## Schedule

| ID | WBS | Task | Type | Duration | Start | Finish | Predecessors | Complete | Remaining | Baseline start | Baseline finish | Baseline duration | Total slack | Free slack | Constraint | Resources | Work | Actual work | Cost | Baseline cost | Actual cost | Text1 | Text2 | Text4 | Text3 |
| --- | --- | --- | --- | --- | --- | --- | --- | --- | --- | --- | --- | --- | --- | --- | --- | --- | --- | --- | --- | --- | --- | --- | --- | --- | --- |
| 1 | 1 | **MDSS Implementation** |  | 103d? | 2009-02-02 A | 2009-06-24 |  | 49% | 52.09d? | 2009-02-02 | 2009-05-28 | 83.25d? | 4d |  |  |  | 3011.26h | 1557.26h | 161,299.25 | 257,416.04 | 72,979.25 |  |  |  |  |
| 2 | 1.1 | **Create Prototype (Entomology)** |  | 76d? | 2009-02-02 A | 2009-05-18 |  | 94% | 4.53d? | 2009-02-02 | 2009-03-12 | 28.23d? | 31d |  |  |  | 1282.6h | 1186.6h | 68,839.25 | 74,152.04 | 66,999.25 |  |  |  |  |
| 3 | 1.1.1 | **System requirements** |  | 76d? | 2009-02-02 A | 2009-05-18 |  | 88% | 9.5d? | 2009-02-02 | 2009-03-09 | 26d? | 31d |  |  |  | 719.4h | 623.4h | 39,031.25 | 31,372.04 | 37,191.25 |  |  |  |  |
| 4 | 1.1.1.1 | Dev: Ontology Schema MIRO |  | 15.5d | 2009-02-02 A | 2009-02-23 A |  | 100% |  | 2009-02-02 | 2009-02-09 | 6d |  |  |  | Thomas (Oz) [85%] | 105.4h | 105.4h | 12,121 | 4,692 | 12,121 | SYS08 | 5 days |  |  |
| 5 | 1.1.1.2 | Dev: Geography MOJO attributes (PostGIS phase 1) |  | 20d | 2009-02-02 A | 2009-02-27 A |  | 100% |  | 2009-02-02 | 2009-02-09 | 5.88d? |  |  | finish no earlier than 2009-02-24 | Nathan [85%] | 136h | 136h | 15,640.25 | 4,600.04 | 15,640.25 | SYS03-01 | 7 days |  |  |
| 6 | 1.1.1.3 | Dev: Geography functions integrated into the query API |  | 5d | 2009-03-02 A | 2009-03-06 A | 5 | 100% |  | 2009-02-09 | 2009-02-17 | 5.88d? |  |  | finish no earlier than 2009-03-06 | Nathan [85%] | 34h | 34h | 3,910 | 4,600 | 3,910 | SYS03-02 | 7 days |  |  |
| 7 | 1.1.1.4 | Dev: GIS visual tool integration |  | 8d | 2009-02-02 A | 2009-03-04 A |  | 100% |  | 2009-02-10 | 2009-02-19 | 7.06d? |  |  |  | Naifeh | 64h | 64h |  | 5,520 |  | SYS10 | 6 days |  |  |
| 8 | 1.1.1.5 | Dev: Geoserver integration |  | 8d | 2009-02-12 A | 2009-03-03 A |  | 100% |  | 2009-02-19 | 2009-03-02 | 7.06d? |  |  | finish no earlier than 2009-03-03 | Naifeh | 64h | 64h |  | 5,520 |  | SYS11 | 6 days |  |  |
| 9 | 1.1.1.6 | Dev: DHTML tree widget selection and integration |  | 8.5d | 2009-02-11 A | 2009-02-23 A |  | 100% |  | 2009-02-11 | 2009-02-17 | 5d? |  |  | start no earlier than 2009-02-11 | Naifeh | 68h | 68h |  |  |  | SYS02 | 5 days | 10 |  |
| 10 | 1.1.1.7 | Dev: import/export an XLS file with a pre-populated headers |  | 11d | 2009-02-11 A | 2009-02-25 A |  | 100% |  | 2009-02-11 | 2009-02-18 | 6d? |  |  | start no earlier than 2009-02-11 | Eric | 88h | 88h |  |  |  | SYS04-01 | 2 days | 11 |  |
| 11 | 1.1.1.8 | Dev: Import XLS file. Map column headers to fields of a class |  | 2d? | 2009-02-20 A | 2009-02-23 A | 10 | 100% |  | 2009-02-19 | 2009-02-20 | 2d? |  |  |  | Eric | 16h | 16h |  |  |  | SYS04-02 | 2 days | 12 |  |
| 12 | 1.1.1.9 | Dev: Represent query criteria in back-end |  | 7d? | 2009-03-09 A | 2009-05-18 | 6 | 86% | 1d? | 2009-02-25 | 2009-03-03 | 5d? | 31d |  | finish no earlier than 2009-03-16 | Nathan | 56h | 48h | 6,440 |  | 5,520 | SYS06 | 5 days | 14 |  |
| 13 | 1.1.1.10 | Dev: Save query criteria to the database |  | 1d? | 2009-04-14 | 2009-04-14 |  |  |  | 2009-03-04 | 2009-03-04 | 1d? | 12.65d | 0d | start no earlier than 2009-04-14 | Nathan | 8h |  | 920 |  |  | SYS06-03 | 1 day | 15 |  |
| 14 | 1.1.1.11 | Dev: Generic GIS visualisation and output requirements |  | 80h | 2009-04-13 | 2009-04-24 | 19 |  |  | 2009-03-02 | 2009-03-09 | 47.06h | 4d | 0d | finish no earlier than 2009-03-27 | Naifeh | 80h |  |  | 4,600 |  | MDSS143 |  | 16 |  |
| 15 | 1.1.2 | **Prototype Use cases** |  | 45.5d? | 2009-02-09 A | 2009-04-13 A |  | 100% |  | 2009-02-09 | 2009-03-12 | 23.23d? |  |  |  |  | 563.2h | 563.2h | 29,808 | 42,780 | 29,808 |  |  | 17 |  |
| 16 | 1.1.2.1 | **Search for a geo entity** |  | 35.35d? | 2009-02-20 A | 2009-04-10 A |  | 100% |  | 2009-02-20 | 2009-03-12 | 14.12d? |  |  |  |  | 168h | 168h |  | 11,040 |  | MDSS101 |  | 18 |  |
| 17 | 1.1.2.1.1 | Dev: Search for a geo entity - ontology tree |  | 9d | 2009-02-20 A | 2009-03-09 A |  | 100% |  | 2009-02-20 | 2009-02-26 | 4.71d? |  |  | finish no earlier than 2009-03-09 | Naifeh | 72h | 72h |  | 3,680 |  | MDSS111 | 4 days | 19 |  |
| 18 | 1.1.2.1.2 | Dev: Search for a geo entity |  | 2d? | 2009-03-17 A | 2009-03-18 A | 6, 17 | 100% |  | 2009-02-26 | 2009-03-03 | 2.35d? |  |  | finish no earlier than 2009-03-18 | Naifeh | 16h | 16h |  | 1,840 |  | MDSS101 |  | 20 |  |
| 19 | 1.1.2.1.3 | Polish MDSS111 and MDSS101 |  | 80h | 2009-03-23 A | 2009-04-10 A |  | 100% |  |  |  |  |  |  | finish no earlier than 2009-04-10 | Naifeh | 80h | 80h |  |  |  | MDSS101 |  |  |  |
| 20 | 1.1.2.2 | Investigate widget libraries |  | 16h | 2009-02-09 A | 2009-02-10 A |  | 100% |  | 2009-02-09 | 2009-02-10 | 16h |  |  | start no earlier than 2009-02-07 | Darrell | 16h | 16h | 1,840 | 1,840 | 1,840 |  |  | 24 |  |
| 21 | 1.1.2.3 | Dev: login to MDSS |  | 4h | 2009-02-11 A | 2009-02-11 A | 20 | 100% |  | 2009-02-11 | 2009-02-11 | 4h |  |  |  | Darrell | 4h | 4h | 460 | 460 | 460 | MDSS107 |  | 25 |  |
| 22 | 1.1.2.4 | Dev: BE - Submit a mosquito collection |  | 224h | 2009-02-09 A | 2009-03-18 A |  | 100% |  | 2009-02-09 | 2009-02-11 | 20h |  |  | start no earlier than 2009-02-07 | Justin [7.1%] | 16h | 16h | 1,840 | 1,840 | 1,840 | MDSS024 |  | 26 |  |
| 23 | 1.1.2.5 | Dev: GUI - Submit a mosquito collection |  | 20h | 2009-02-18 A | 2009-02-20 A | 21, 22 | 100% |  | 2009-02-11 | 2009-02-13 | 20h |  |  | start no earlier than 2009-02-18 | Darrell [80%] | 16h | 16h | 1,840 | 1,840 | 1,840 | MDSS024 |  | 27 |  |
| 24 | 1.1.2.6 | Dev: GUI - Adult discriminating dose assay |  | 20h | 2009-02-24 A | 2009-02-26 A | 35, 23 | 100% |  | 2009-02-25 | 2009-02-27 | 20h |  |  |  | Darrell [80%] | 16h | 16h | 1,840 | 1,840 | 1,840 | MDSS004 |  | 35 |  |
| 25 | 1.1.2.7 | Dev: BE - Submit collection points |  | 1.25d? | 2009-02-11 A | 2009-02-12 A | 22 | 100% |  | 2009-02-11 | 2009-02-12 | 1.25d? |  |  |  | Justin [80%] | 8h | 8h | 920 | 920 | 920 | MDSS016 |  | 28 |  |
| 26 | 1.1.2.8 | Dev: BE - Resistance Mechanisms |  | 5.75d | 2009-02-23 A | 2009-03-02 A | 25 | 100% |  | 2009-02-12 | 2009-02-17 | 2.5d? |  |  | finish no earlier than 2009-03-02 | Justin [80%] | 36.8h | 36.8h | 4,232 | 1,840 | 4,232 | MDSS012 |  | 30 |  |
| 27 | 1.1.2.9 | Dev: GUI - Resistance Mechanisms |  | 48h | 2009-03-03 A | 2009-03-10 A | 26, 24 | 100% |  | 2009-02-17 | 2009-02-24 | 40h |  |  | finish no earlier than 2009-03-06 | Darrell [200%] | 32h | 32h | 3,680 | 3,680 | 3,680 | MDSS012 |  | 31 |  |
| 28 | 1.1.2.10 | Dev: GUI - Submit collection points |  | 10h | 2009-03-23 A | 2009-03-24 A | 33 | 100% |  | 2009-02-16 | 2009-02-17 | 10h |  |  | start no earlier than 2009-02-24 | Darrell [80%] | 8h | 8h | 920 | 920 | 920 | MDSS016 |  | 29 |  |
| 29 | 1.1.2.11 | Dev: GUI - Efficacy assay |  | 5h | 2009-03-13 A | 2009-03-16 A | 36 | 100% |  | 2009-03-18 | 2009-03-23 | 20h |  |  | finish no earlier than 2009-03-13 | Darrell [80%] | 4h | 4h | 460 | 1,840 | 460 | MDSS025 |  | 51 |  |
| 30 | 1.1.2.12 | Dev: BE - Resistance cut-off values |  | 1.25d? | 2009-02-20 A | 2009-02-23 A |  | 100% |  | 2009-02-17 | 2009-02-18 | 1.25d? |  |  |  | Justin [80%] | 8h | 8h | 920 | 920 | 920 | MDSS009 |  | 32 |  |
| 31 | 1.1.2.13 | Dev: GUI - Resistance cut-off values |  | 8h | 2009-02-27 A | 2009-02-27 A | 30 | 100% |  | 2009-02-24 | 2009-02-25 | 10h |  |  | start no earlier than 2009-02-27 | Darrell | 8h | 8h | 920 | 920 | 920 | MDSS009 |  | 33 |  |
| 32 | 1.1.2.14 | Dev: BE - Adult knock down assay |  | 1.25d? | 2009-03-16 A | 2009-03-17 A | 29, 44 | 100% |  | 2009-03-05 | 2009-03-09 | 1.5d? |  |  |  | Justin [80%] | 8h | 8h | 920 | 1,104 | 920 | MDSS006 |  | 46 |  |
| 33 | 1.1.2.15 | Dev: GUI - Adult knock down assay |  | 10h | 2009-03-20 A | 2009-03-23 A | 32, 34 | 100% |  | 2009-03-13 | 2009-03-16 | 15h |  |  |  | Darrell [80%] | 8h | 8h | 920 | 1,380 | 920 | MDSS006 |  | 47 |  |
| 34 | 1.1.2.16 | Dev: GUI - Larvae discriminating dose assay |  | 10h | 2009-03-19 A | 2009-03-20 A |  | 100% |  | 2009-03-16 | 2009-03-18 | 15h |  |  | start no earlier than 2009-03-19 | Darrell [80%] | 8h | 8h | 920 | 1,380 | 920 | MDSS008 |  | 49 | 10 |
| 35 | 1.1.2.17 | Dev: BE - Adult discriminating dose assay |  | 1.25d? | 2009-02-23 A | 2009-02-24 A | 30 | 100% |  | 2009-02-18 | 2009-02-20 | 2.5d? |  |  |  | Justin [80%] | 8h | 8h | 920 | 1,840 | 920 | MDSS004 |  | 34 |  |
| 36 | 1.1.2.18 | Dev: BE - Efficacy assay |  | 2.5d? | 2009-03-11 A | 2009-03-13 A |  | 100% |  | 2009-03-10 | 2009-03-13 | 2.5d? |  |  | start no earlier than 2009-03-11 | Justin [80%] | 16h | 16h | 1,840 | 1,840 | 1,840 | MDSS025 |  | 50 |  |
| 37 | 1.1.2.19 | Dev: Configure import interfaces |  | 32h | 2009-02-24 A | 2009-02-27 A |  | 100% |  | 2009-02-23 | 2009-02-24 | 10h |  |  | start no earlier than 2009-02-24 | Eric [50%] | 16h | 16h |  | 920 |  | MDSS100 |  | 36 |  |
| 38 | 1.1.2.20 | Dev: BE - Entomology dynamic query |  | 5d | 2009-03-23 A | 2009-03-27 A | 35 | 100% |  | 2009-02-24 | 2009-02-26 | 2.5d? |  |  | finish no earlier than 2009-03-27 | Naifeh | 40h | 40h |  | 1,840 |  | MDSS145 |  | 38 |  |
| 39 | 1.1.2.21 | Dev: Enquiry integration with selected reporting tool |  | 4d? | 2009-03-06 A | 2009-03-11 A | 26 | 100% |  | 2009-02-26 | 2009-03-04 | 4d? |  |  | finish no earlier than 2009-03-11 | Justin | 32h | 32h | 3,680 | 3,680 | 3,680 | SYS09 |  | 40 |  |
| 40 | 1.1.2.22 | Dev: Create formatted dynamic reports |  | 8h | 2009-03-12 A | 2009-03-12 A | 39 | 100% |  |  |  |  |  |  | start no earlier than 2009-03-12 | Justin [80%] | 6.4h | 6.4h | 736 |  | 736 | MDSS062 |  | 360 |  |
| 41 | 1.1.2.23 | Dev: MO Importer |  | 40h | 2009-03-02 A | 2009-03-06 A |  | 100% |  |  |  |  |  |  | start no earlier than 2009-03-02 | Eric | 40h | 40h |  |  |  |  |  | 359 |  |
| 42 | 1.1.2.24 | Dev: change visibility of fields on GUI |  | 40h | 2009-04-06 A | 2009-04-13 A | 172 | 100% |  | 2009-03-05 | 2009-03-11 | 32h |  |  | start no earlier than 2009-04-06 | Eric | 40h | 40h |  | 3,680 |  | MDSS117 |  | 41 |  |
| 43 | 1.2 | Required delivery of prototype | milestone | 8h | 2009-03-09 A | 2009-03-09 A |  | 100% |  | 2009-03-02 | 2009-03-02 | 8h |  |  | start no earlier than 2009-03-09 |  |  |  |  |  |  |  |  | 43 |  |
| 44 | 1.3 | Dev: BE - Larvae discriminating dose assay |  | 1.25d? | 2009-03-13 A | 2009-03-16 A | 36 | 100% |  | 2009-03-09 | 2009-03-10 | 1.5d? |  |  | finish no earlier than 2009-03-13 | Justin [80%] | 8h | 8h | 920 | 1,104 | 920 | MDSS008 |  | 48 | 10 |
| 45 | 1.4 | Dev: GUI - Entomology dynamic query |  | 8h | 2009-05-04 | 2009-05-04 | 38, 182 |  |  | 2009-03-03 | 2009-03-05 | 20h | 41d |  |  | Naifeh | 8h |  |  | 1,840 |  | MDSS145 |  | 39 |  |
| 46 | 1.5 | CR: BE - Submit Collection Points |  | 4h | 2009-03-18 A | 2009-03-18 A | 32 | 100% |  |  |  |  |  |  |  | Justin | 4h | 4h | 460 |  | 460 | MDSS016 |  | 361 |  |
| 47 | 1.6 | CR: BE - Mechanisms |  | 4h | 2009-03-18 A | 2009-03-18 A | 46 | 100% |  |  |  |  |  |  |  | Justin | 4h | 4h | 460 |  | 460 | MDSS012 |  | 362 |  |
| 48 | 1.7 | CR: GUI - Mechanisms |  | 4h | 2009-03-24 A | 2009-03-25 A | 47, 28 | 100% |  |  |  |  |  |  |  | Darrell | 4h | 4h | 460 |  | 460 | MDSS012 |  | 363 |  |
| 49 | 1.8 | CR: BE - Resistance cut-off values |  | 4h | 2009-03-19 A | 2009-03-19 A | 47 | 100% |  |  |  |  |  |  |  | Justin | 4h | 4h | 460 |  | 460 | MDSS009 |  | 364 |  |
| 50 | 1.9 | CR: GUI - Resistance cut-off values |  | 4h | 2009-03-25 A | 2009-03-25 A | 49, 48 | 100% |  |  |  |  |  |  |  | Darrell | 4h | 4h | 460 |  | 460 | MDSS009 |  | 365 |  |

| ID | WBS | Task | Type | Duration | Start | Finish | Predecessors | Complete | Remaining | Baseline start | Baseline finish | Baseline duration | Total slack | Free slack | Constraint | Resources | Work | Actual work | Text4 |
| --- | --- | --- | --- | --- | --- | --- | --- | --- | --- | --- | --- | --- | --- | --- | --- | --- | --- | --- | --- |
| 51 | 1.10 | **Aquire Geo Data** |  | 22d? | 2009-03-24 A | 2009-04-22 |  |  | 22d? | 2009-02-10 | 2009-02-24 | 11d? | 49d |  |  |  |  |  | 52 |
| 52 | 1 | **Mozambique** |  | 0d | 2009-03-24 A | 2009-03-24 |  |  | 0d | 2009-02-10 | 2009-02-24 | 11d? | 71d |  |  |  |  |  | 53 |
| 53 | 1.1 | Priority 1: Province Boundaries | milestone | 0h | 2009-03-24 A | 2009-03-24 A |  | 100% |  | 2009-02-10 | 2009-02-23 | 10d |  |  | start no earlier than 2009-03-24 |  |  |  | 54 |
| 54 | 1.2 | Priority 1: District Boundaries | milestone | 0h | 2009-03-24 A | 2009-03-24 A |  | 100% |  | 2009-02-10 | 2009-02-13 | 4d? |  |  | start no earlier than 2009-03-24 |  |  |  | 57 |
| 55 | 1.3 | Priority 1: Administrative Post Boundaries | milestone | 0h | 2009-03-24 A | 2009-03-24 A |  | 100% |  | 2009-02-10 | 2009-02-13 | 4d? |  |  | start no earlier than 2009-03-24 |  |  |  | 60 |
| 56 | 1.4 | Priority 1: Locality Boundaries | milestone | 0h | 2009-03-24 A | 2009-03-24 A |  | 100% |  | 2009-02-10 | 2009-02-13 | 4d? |  |  | start no earlier than 2009-03-24 |  |  |  | 63 |
| 57 | 1.5 | Priority 1: Village Points | milestone | 0h | 2009-03-24 A | 2009-03-24 A |  | 100% |  | 2009-02-10 | 2009-02-23 | 10d? |  |  | start no earlier than 2009-03-24 |  |  |  | 66 |
| 58 | 1.6 | Priority 1: Health Facility Points | milestone | 0h | 2009-03-24 A | 2009-03-24 A |  | 100% |  | 2009-02-10 | 2009-02-24 | 11d? |  |  | start no earlier than 2009-03-24 |  |  |  | 69 |
| 59 | 1.7 | Priority 1: Sentinel Site Points | milestone | 0h | 2009-03-24 A | 2009-03-24 A |  | 100% |  | 2009-02-10 | 2009-02-16 | 5d? |  |  | start no earlier than 2009-03-24 |  |  |  | 72 |
| 60 | 1.8 | Priority 1: Window Trap Points | milestone | 0h | 2009-03-24 | 2009-03-24 |  |  |  | 2009-02-10 | 2009-02-16 | 5d? | 71d |  | start no earlier than 2009-03-24 |  |  |  | 75 |
| 61 | 2 | **Malawi** |  | 1d | 2009-03-31 | 2009-03-31 |  |  |  | 2009-02-10 | 2009-02-23 | 10d? | 65d |  |  |  |  |  | 78 |
| 62 | 2.1 | Priority 1: Province / Region Boundaries |  | 1d | 2009-03-31 | 2009-03-31 |  |  |  | 2009-02-10 | 2009-02-23 | 10d? | 65d |  | start no earlier than 2009-03-31 |  |  |  | 79 |
| 63 | 2.2 | Priority 1: District Boundaries | milestone | 1d | 2009-03-31 | 2009-03-31 |  |  |  | 2009-02-10 | 2009-02-23 | 10d? | 65d |  | start no earlier than 2009-03-31 |  |  |  | 82 |
| 64 | 2.3 | Priority 1: Traditional Authority Boundaries | milestone | 1d | 2009-03-31 | 2009-03-31 |  |  |  | 2009-02-10 | 2009-02-23 | 10d? | 65d |  | start no earlier than 2009-03-31 |  |  |  | 85 |
| 65 | 2.4 | Priority 1: Village Points | milestone | 1d | 2009-03-31 | 2009-03-31 |  |  |  | 2009-02-10 | 2009-02-23 | 10d? | 65d |  | start no earlier than 2009-03-31 |  |  |  | 88 |
| 66 | 2.5 | Priority 1: Health Facility Points | milestone | 1d | 2009-03-31 | 2009-03-31 |  |  |  | 2009-02-10 | 2009-02-23 | 10d? | 65d |  | start no earlier than 2009-03-31 |  |  |  | 91 |
| 67 | 2.6 | Priority 1: Sentinel Site Points | milestone | 1d | 2009-03-31 | 2009-03-31 |  |  |  | 2009-02-10 | 2009-02-19 | 8d? | 65d |  | start no earlier than 2009-03-31 |  |  |  | 94 |
| 68 | 2.7 | Priority 1: Window Trap Points | milestone | 1d | 2009-03-31 | 2009-03-31 |  |  |  | 2009-02-10 | 2009-02-17 | 6d? | 65d |  | start no earlier than 2009-03-31 |  |  |  | 97 |
| 69 | 3 | **Zambia** |  | 10d? | 2009-04-09 | 2009-04-22 |  |  |  | 2009-02-10 | 2009-02-23 | 10d? | 49d |  |  |  |  |  | 100 |
| 70 | 3.1 | Priority 1: Province Boundaries | milestone | 10d? | 2009-04-09 | 2009-04-22 |  |  |  | 2009-02-10 | 2009-02-23 | 10d? | 49d |  | start no earlier than 2009-04-09 |  |  |  | 101 |
| 71 | 3.2 | Priority 1: District Boundaries | milestone | 10d? | 2009-04-09 | 2009-04-22 |  |  |  | 2009-02-10 | 2009-02-23 | 10d? | 49d |  | start no earlier than 2009-04-09 |  |  |  | 104 |
| 72 | 3.3 | Priority 1: Constituency Boundaries | milestone | 10d? | 2009-04-09 | 2009-04-22 |  |  |  | 2009-02-10 | 2009-02-23 | 10d? | 49d |  | start no earlier than 2009-04-09 |  |  |  | 107 |
| 73 | 3.4 | Priority 1: Ward Boundaries | milestone | 10d? | 2009-04-09 | 2009-04-22 |  |  |  | 2009-02-10 | 2009-02-23 | 10d? | 49d |  | start no earlier than 2009-04-09 |  |  |  | 110 |
| 74 | 3.5 | Priority 1: Village Points | milestone | 10d? | 2009-04-09 | 2009-04-22 |  |  |  | 2009-02-10 | 2009-02-23 | 10d? | 49d |  | start no earlier than 2009-04-09 |  |  |  | 113 |
| 75 | 3.6 | Priority 1: Health Facility Points | milestone | 10d? | 2009-04-09 | 2009-04-22 |  |  |  | 2009-02-10 | 2009-02-20 | 9d? | 49d |  | start no earlier than 2009-04-09 |  |  |  | 116 |
| 76 | 3.7 | Priority 1: Sentinel Site Points | milestone | 10d? | 2009-04-09 | 2009-04-22 |  |  |  | 2009-02-10 | 2009-02-20 | 9d? | 49d |  | start no earlier than 2009-04-09 |  |  |  | 119 |
| 77 | 3.8 | Priority 1: Window Trap Points | milestone | 10d? | 2009-04-09 | 2009-04-22 |  |  |  | 2009-02-10 | 2009-02-20 | 9d? | 49d |  | start no earlier than 2009-04-09 |  |  |  | 122 |
| 78 | 1.11 | Deliver Population data | milestone | 0h | 2009-04-09 | 2009-04-09 |  |  |  | 2009-02-24 | 2009-02-24 | 0h | 58d | 0d | start no earlier than 2009-04-09 | MRC |  |  | 125 |
| 79 | 1.12 | Import Geo data into MDSS schema |  | 8h | 2009-04-09 | 2009-04-09 | 78 |  |  | 2009-02-25 | 2009-02-25 | 8h | 58d |  |  |  | 24h |  | 126 |
| 80 | 1.13 | Deliver entomology data to be imported |  | 84h | 2009-02-18 A | 2009-03-04 A |  | 100% |  | 2009-02-20 | 2009-02-20 | 0h |  |  | start no earlier than 2009-02-18 | Mike | 64h | 64h | 127 |

| ID | WBS | Task | Type | Duration | Start | Finish | Predecessors | Complete | Remaining | Baseline start | Baseline finish | Baseline duration | Total slack | Free slack | Constraint | Deadline | Resources | Work | Actual work | Text4 | Text1 |
| --- | --- | --- | --- | --- | --- | --- | --- | --- | --- | --- | --- | --- | --- | --- | --- | --- | --- | --- | --- | --- | --- |
| 81 | 1.14 | **Prototype Test Cases** |  | 2.86d? | 2009-02-23 A | 2009-02-25 A |  | 100% |  | 2009-02-11 | 2009-02-13 | 2.86d? |  |  |  |  |  | 16h | 16h | 128 |  |
| 82 | 1.14.1 | TC: Geo Tree |  | 1.43d? | 2009-02-23 A | 2009-02-24 A |  | 100% |  | 2009-02-11 | 2009-02-12 | 1.43d? |  |  | start no earlier than 2009-02-21 |  | Marlize [70%] | 8h | 8h | 129 | MDSS111 |
| 83 | 1.14.2 | TC: Searching for a geo entity |  | 11.43h | 2009-02-24 A | 2009-02-25 A | 82 | 100% |  | 2009-02-12 | 2009-02-13 | 11.43h |  |  |  |  | Marlize [70%] | 8h | 8h | 130 | MDSS101 |
| 84 | 1.15 | Create test cases for entomology prototype |  | 88h | 2009-02-16 A | 2009-03-02 A |  | 100% |  | 2009-02-11 | 2009-02-20 | 64h |  |  | finish no earlier than 2009-03-02 |  | Mike [50%] | 32h | 32h | 131 |  |
| 85 | 1.16 | Test defect logging procedures |  | 0.71d? | 2009-03-04 A | 2009-03-04 A | 154 | 100% |  | 2009-02-24 | 2009-02-25 | 0.71d? |  |  | start no earlier than 2009-03-04 |  | Marlize [70%] | 4h | 4h | 132 |  |
| 86 | 1.17 | Prepare entomology test data |  | 5.72h | 2009-03-06 A | 2009-03-06 A | 80, 87 | 100% |  | 2009-02-27 | 2009-02-27 | 5.71h |  |  |  |  | Marlize [69.9%] | 4h | 4h | 133 |  |
| 87 | 1.18 | Learn BIRT report writer |  | 11.43h | 2009-03-19 A | 2009-03-20 A | 85 | 100% |  | 2009-02-25 | 2009-02-27 | 11.43h |  |  | start no earlier than 2009-03-19 |  | Marlize [70%] | 8h | 8h | 134 |  |
| 88 | 1.19 | **Test Prototype Submit Change Requests** |  | 35.89d? | 2009-03-16 A | 2009-05-04 |  | 61% | 13.96d? | 2009-03-02 | 2009-03-20 | 13.57d? | 41.11d |  |  |  |  | 103.06h | 65.06h | 135 |  |
| 89 | 1.19.1 | **Test: Geo entity search and maintanance** |  | 16.72d? | 2009-03-17 A | 2009-04-09 A |  | 100% |  | 2009-03-02 | 2009-03-12 | 7.15d? |  |  |  |  |  | 44.02h | 44.02h | 136 |  |
| 90 | 1.19.1.1 | Test: login to MDSS | milestone | 0h | 2009-03-17 A | 2009-03-17 A | 86 | 100% |  | 2009-03-02 | 2009-03-02 | 0h |  |  | start no earlier than 2009-03-09 | 2009-03-08 | Marlize [70%] |  |  | 137 | MDSS107 |
| 91 | 1.19.1.2 | Test: Search for a geo entity - tree |  | 0.36d? | 2009-03-30 A | 2009-03-30 A | 90, 158 | 100% |  | 2009-03-03 | 2009-03-03 | 0.36d? |  |  | start no earlier than 2009-03-03 |  | Marlize [70%] | 2h | 2h | 138 | MDSS111 |
| 92 | 1.19.1.3 | Submit defects: Search for a geo entity - tree |  | 0.71d? | 2009-03-30 A | 2009-03-31 A | 91 | 100% |  | 2009-03-03 | 2009-03-04 | 0.71d? |  |  |  |  | Marlize [70%] | 4h | 4h | 139 | MDSS111 |
| 93 | 1.19.1.4 | Test: create a geo entity |  | 2.86h | 2009-03-31 A | 2009-03-31 A | 92 | 100% |  | 2009-03-04 | 2009-03-04 | 2.86h |  |  |  |  | Marlize [70%] | 2h | 2h | 140 | MDSS101 |
| 94 | 1.19.1.5 | Submit defects: create a geo entity |  | 5.71h | 2009-03-31 A | 2009-04-01 A | 93 | 100% |  | 2009-03-04 | 2009-03-05 | 5.71h |  |  |  |  | Marlize [70%] | 4h | 4h | 141 | MDSS101 |
| 95 | 1.19.1.6 | Test: Search for a geo entity - filtered |  | 0.36d? | 2009-04-01 A | 2009-04-01 A | 94 | 100% |  | 2009-03-05 | 2009-03-05 | 0.36d? |  |  |  |  | Marlize [70%] | 2h | 2h | 142 | MDSS101 |
| 96 | 1.19.1.7 | Submit defects: Search for a geo entity - filtered |  | 0.36d | 2009-04-01 A | 2009-04-02 A | 95 | 100% |  | 2009-03-05 | 2009-03-05 | 0.36d |  |  |  |  | Marlize [70%] | 2.02h | 2.02h | 143 | MDSS101 |
| 97 | 1.19.1.8 | Test: Search for a geo entity - Hierarchy table |  | 1.43d? | 2009-04-02 A | 2009-04-03 A | 96 | 100% |  | 2009-03-05 | 2009-03-09 | 1.43d? |  |  |  |  | Marlize [70%] | 8h | 8h | 144 | MDSS101 |
| 98 | 1.19.1.9 | TC: IRS - dynamic query |  | 5.72h | 2009-04-03 A | 2009-04-06 A | 97 | 100% |  | 2009-03-30 | 2009-03-31 | 5.71h |  |  |  |  | Marlize [69.9%] | 4h | 4h | 328 | MDSS132 |
| 99 | 1.19.1.10 | Submit defects: Search for a geo entity - Hierarchy table |  | 0.71d? | 2009-04-06 A | 2009-04-07 A | 98 | 100% |  | 2009-03-09 | 2009-03-10 | 0.71d? |  |  |  |  | Marlize [70%] | 4h | 4h | 145 | MDSS101 |
| 100 | 1.19.1.11 | Test: Search for a geo entity - combo boxes |  | 0.36d? | 2009-04-07 A | 2009-04-07 A | 99 | 100% |  | 2009-03-10 | 2009-03-10 | 0.36d? |  |  |  |  | Marlize [70%] | 2h | 2h | 146 | MDSS101 |
| 101 | 1.19.1.12 | Submit defects: Search for a geo entity - combo boxes |  | 0.36d? | 2009-04-07 A | 2009-04-07 A | 100 | 100% |  | 2009-03-10 | 2009-03-10 | 0.36d? |  |  |  |  | Marlize [70%] | 2h | 2h | 147 | MDSS101 |
| 102 | 1.19.1.13 | Test: Call 101 from 024, 016, 025 |  | 0.36d? | 2009-04-07 A | 2009-04-08 A | 101 | 100% |  | 2009-03-10 | 2009-03-11 | 0.36d? |  |  |  |  | Marlize [70%] | 2h | 2h | 148 | MDSS101 |
| 103 | 1.19.1.14 | Submit defects: Call 101 from 024, 016, 025 |  | 0.36d? | 2009-04-08 A | 2009-04-08 A | 102 | 100% |  | 2009-03-11 | 2009-03-11 | 0.36d? |  |  |  |  | Marlize [70%] | 2h | 2h | 149 | MDSS101 |
| 104 | 1.19.1.15 | Write change request MDSS101, MDSS111 |  | 0.71d? | 2009-04-08 A | 2009-04-09 A | 103 | 100% |  | 2009-03-11 | 2009-03-12 | 0.71d? |  |  |  |  | Marlize [70%] | 4h | 4h | 150 | MDSS101 |
| 105 | 1.19.2 | Test: changing visibility of fields in GUI |  | 1.43h | 2009-04-16 | 2009-04-16 | 104 |  |  | 2009-03-12 | 2009-03-12 | 1.43h | 47.57d | 0d | start no earlier than 2009-04-16 |  | Marlize [70%] | 1h |  | 151 | MDSS117 |
| 106 | 1.19.3 | Submit defects: changing visibility of fields in GUI |  | 2.86h | 2009-04-16 | 2009-04-16 | 105 |  |  | 2009-03-12 | 2009-03-12 | 2.86h | 47.57d | 6.46d |  |  | Marlize [70%] | 2h |  | 152 | MDSS117 |
| 107 | 1.19.4 | Test: Resistance cut-off values |  | 1h | 2009-03-16 A | 2009-03-16 A |  | 100% |  | 2009-03-13 | 2009-03-13 | 1h |  |  | start no earlier than 2009-03-14 |  | Mike | 1h | 1h | 179 | MDSS009 |
| 108 | 1.19.5 | Submit defects: Resistance cut-off values |  | 1h | 2009-03-16 A | 2009-03-16 A | 107 | 100% |  | 2009-03-16 | 2009-03-16 | 1h |  |  |  |  | Mike | 1h | 1h | 180 | MDSS009 |
| 109 | 1.19.6 | Test:Species identification |  | 1h | 2009-03-16 A | 2009-03-16 A | 108 | 100% |  | 2009-03-10 | 2009-03-10 | 1h |  |  |  |  | Mike | 1h | 1h | 162 | MDSS012 |
| 110 | 1.19.7 | Submit defects: Species identification |  | 1h | 2009-03-16 A | 2009-03-16 A | 109 | 100% |  | 2009-03-11 | 2009-03-11 | 1h |  |  |  |  | Mike | 1h | 1h | 163 | MDSS012 |
| 111 | 1.19.8 | Write change request: Mechanisms |  | 1h | 2009-03-16 A | 2009-03-16 A | 110 | 100% |  | 2009-03-12 | 2009-03-12 | 4h |  |  |  |  | Mike | 1h | 1h | 172 | MDSS012 |
| 112 | 1.19.9 | Test: Submit a mosquito collection |  | 0.13d? | 2009-03-16 A | 2009-03-16 A | 111 | 100% |  | 2009-03-09 | 2009-03-09 | 0.12d? |  |  |  |  | Mike | 1.04h | 1.04h | 153 | MDSS024 |
| 113 | 1.19.10 | Submit defects: Submit a mosquito collection |  | 1h | 2009-03-16 A | 2009-03-16 A | 112 | 100% |  | 2009-03-09 | 2009-03-09 | 2h |  |  |  |  | Mike | 1h | 1h | 154 | MDSS024 |
| 114 | 1.19.11 | Write change request: Collections |  | 1h | 2009-03-23 A | 2009-03-23 A | 113 | 100% |  | 2009-03-10 | 2009-03-10 | 4h |  |  | finish no earlier than 2009-03-23 |  | Miguel | 1h | 1h | 159 | MDSS024 |
| 115 | 1.19.12 | Test: search/update/delete record |  | 1h | 2009-03-17 A | 2009-03-17 A | 114 | 100% |  | 2009-03-09 | 2009-03-09 | 1h |  |  |  |  | Mike | 1h | 1h | 155 | MDSS75 |
| 116 | 1.19.13 | Submit defects: search/update/delete |  | 1h | 2009-03-17 A | 2009-03-17 A | 115 | 100% |  | 2009-03-09 | 2009-03-09 | 2h |  |  |  |  | Mike | 1h | 1h | 156 |  |
| 117 | 1.19.14 | Test: Efficacy assay |  | 0.12d? | 2009-03-17 A | 2009-03-17 A | 116 | 100% |  | 2009-03-16 | 2009-03-16 | 0.12d? |  |  |  |  | Mike | 1h | 1h | 182 | MDSS025 |
| 118 | 1.19.15 | Submit defects: Efficacy assay |  | 1h | 2009-03-17 A | 2009-03-17 A | 117 | 100% |  | 2009-03-16 | 2009-03-16 | 1h |  |  |  |  | Mike | 1h | 1h | 183 | MDSS025 |
| 119 | 1.19.16 | Write change request: Efficacy assay |  | 1h | 2009-03-23 A | 2009-03-23 A | 118 | 100% |  | 2009-03-16 | 2009-03-17 | 2h |  |  | finish no earlier than 2009-03-23 |  | Miguel | 1h | 1h | 184 | MDSS025 |
| 120 | 1.19.17 | Test: Adult discriminating dose assay |  | 0.12d? | 2009-03-17 A | 2009-03-17 A | 119 | 100% |  | 2009-03-12 | 2009-03-13 | 0.25d? |  |  |  |  | Mike | 1h | 1h | 173 | MDSS004 |
| 121 | 1.19.18 | Submit defects: Adult discriminating dose assay |  | 1h | 2009-03-17 A | 2009-03-17 A | 120 | 100% |  | 2009-03-13 | 2009-03-13 | 2h |  |  |  |  | Mike | 1h | 1h | 174 | MDSS004 |
| 122 | 1.19.19 | Test: Adult knock down assay |  | 0.12d? | 2009-03-25 A | 2009-03-25 A | 121 | 100% |  | 2009-03-13 | 2009-03-13 | 0.12d? |  |  | start no earlier than 2009-03-25 |  | Mike | 1h | 1h | 177 | MDSS006 |
| 123 | 1.19.20 | Submit defects: Adult knock down assay |  | 1h | 2009-03-25 A | 2009-03-25 A | 122 | 100% |  | 2009-03-13 | 2009-03-13 | 1h |  |  |  |  | Mike | 1h | 1h | 178 | MDSS006 |
| 124 | 1.19.21 | Test: Larvae discriminating dose assay |  | 0.12d? | 2009-03-25 A | 2009-03-25 A | 123 | 100% |  | 2009-03-13 | 2009-03-13 | 0.12d? |  |  |  |  | Mike | 1h | 1h | 175 | MDSS008 |
| 125 | 1.19.22 | Submit defects: Larvae discriminating dose assay |  | 1h | 2009-03-25 A | 2009-03-25 A | 124 | 100% |  | 2009-03-13 | 2009-03-13 | 1h |  |  |  |  | Mike | 1h | 1h | 176 | MDSS008 |
| 126 | 1.19.23 | Test: Submit collection points |  | 1h | 2009-03-25 A | 2009-03-25 A | 125 | 100% |  | 2009-03-09 | 2009-03-09 | 1h |  |  |  |  | Mike | 1h | 1h | 157 | MDSS016 |
| 127 | 1.19.24 | Submit defects: Submit collection points |  | 1h | 2009-03-25 A | 2009-03-25 A | 126 | 100% |  | 2009-03-09 | 2009-03-09 | 1h |  |  |  |  | Mike | 1h | 1h | 158 | MDSS016 |
| 128 | 1.19.25 | Test: Import assay and collection data |  | 1h | 2009-04-20 | 2009-04-20 | 86, 127 |  |  | 2009-03-10 | 2009-03-10 | 1h | 51.75d | 0d | start no earlier than 2009-04-19 |  | Mike | 1h |  | 160 | MDSS102 |
| 129 | 1.19.26 | Submit defects: generic import functionality |  | 1h | 2009-04-20 | 2009-04-20 | 128 |  |  | 2009-03-10 | 2009-03-10 | 2h | 51.75d |  |  |  | Mike | 1h |  | 161 | MDSS102 |

| ID | WBS | Task | Duration | Start | Finish | Predecessors | Complete | Baseline start | Baseline finish | Baseline duration | Total slack | Free slack | Constraint | Resources | Work | Actual work | Text1 | Text4 |
| --- | --- | --- | --- | --- | --- | --- | --- | --- | --- | --- | --- | --- | --- | --- | --- | --- | --- | --- |
| 130 | 1.19.27 | **Test: Entomology dynamic query and reports** | 5.89d | 2009-04-27 | 2009-05-04 | 106 |  | 2009-03-12 | 2009-03-20 | 5.89d | 41.11d |  |  |  | 33h |  | MDSS145 | 185 |
| 131 | 1.19.27.1 | Test: add Geo-entity fields | 1.43h | 2009-04-27 | 2009-04-27 |  |  | 2009-03-12 | 2009-03-12 | 1.43h | 41.11d | 0d | start no earlier than 2009-04-25 | Marlize [70%] | 1h |  | MDSS145 | 186 |
| 132 | 1.19.27.2 | Test: add other fields | 1.43h | 2009-04-27 | 2009-04-27 | 131 |  | 2009-03-12 | 2009-03-13 | 1.43h | 41.11d | 0d |  | Marlize [70%] | 1h |  | MDSS145 | 187 |
| 133 | 1.19.27.3 | Test: add functions | 1.43h | 2009-04-27 | 2009-04-27 | 132 |  | 2009-03-13 | 2009-03-13 | 1.43h | 41.11d | 0d |  | Marlize [70%] | 1h |  | MDSS145 | 188 |
| 134 | 1.19.27.4 | Test: date ranges on collection date or assay date | 1.43h | 2009-04-27 | 2009-04-27 | 133 |  | 2009-03-13 | 2009-03-13 | 1.43h | 41.11d | 0d |  | Marlize [70%] | 1h |  | MDSS145 | 189 |
| 135 | 1.19.27.5 | Submit defects: Build query | 2.86h | 2009-04-27 | 2009-04-28 | 134 |  | 2009-03-13 | 2009-03-13 | 2.86h | 41.11d | 0d |  | Marlize [70%] | 2h |  | MDSS145 | 190 |
| 136 | 1.19.27.6 | Test: save query | 1.43h | 2009-04-28 | 2009-04-28 | 135 |  | 2009-03-13 | 2009-03-13 | 1.43h | 41.11d | 0d |  | Marlize [70%] | 1h |  | MDSS056 | 191 |
| 137 | 1.19.27.7 | Test: run a saved query | 1.43h | 2009-04-28 | 2009-04-28 | 136 |  | 2009-03-13 | 2009-03-16 | 1.43h | 41.11d | 0d |  | Marlize [70%] | 1h |  | MDSS056 | 192 |
| 138 | 1.19.27.8 | Test: modify a saved query | 1.43h | 2009-04-28 | 2009-04-28 | 137 |  | 2009-03-16 | 2009-03-16 | 1.43h | 41.11d | 0d |  | Marlize [70%] | 1h |  | MDSS056 | 193 |
| 139 | 1.19.27.9 | Test: export query results | 1.43h | 2009-04-28 | 2009-04-28 | 138 |  | 2009-03-16 | 2009-03-16 | 1.43h | 41.11d | 0d |  | Marlize [70%] | 1h |  | MDSS071 | 194 |
| 140 | 1.19.27.10 | Test: dump functionality | 1.43h | 2009-04-28 | 2009-04-28 | 139 |  | 2009-03-16 | 2009-03-16 | 1.43h | 41.11d | 0d |  | Marlize [70%] | 1h |  |  | 195 |
| 141 | 1.19.27.11 | Submit defects: deploy query | 2.86h | 2009-04-28 | 2009-04-29 | 140 |  | 2009-03-16 | 2009-03-17 | 2.86h | 41.11d | 0d |  | Marlize [70%] | 2h |  |  | 196 |
| 142 | 1.19.27.12 | Test: create thematic map from query | 11.43h | 2009-04-29 | 2009-04-30 | 141 |  | 2009-03-17 | 2009-03-18 | 11.43h | 41.11d | 0d |  | Marlize [70%] | 8h |  |  | 197 |
| 143 | 1.19.27.13 | Test: find query results in BIRT | 1.43h | 2009-04-30 | 2009-04-30 | 142 |  | 2009-03-18 | 2009-03-18 | 1.43h | 41.11d | 0d |  | Marlize [70%] | 1h |  | MDSS062 | 198 |
| 144 | 1.19.27.14 | Test: create a report template (table) | 2.86h | 2009-04-30 | 2009-05-01 | 143 |  | 2009-03-18 | 2009-03-18 | 2.86h | 41.11d | 0d |  | Marlize [70%] | 2h |  | MDSS062 | 199 |
| 145 | 1.19.27.15 | Test: Link a report template to query | 1.43h | 2009-05-01 | 2009-05-01 | 144 |  | 2009-03-18 | 2009-03-19 | 1.43h | 41.11d | 0d |  | Marlize [70%] | 1h |  | MDSS056 | 200 |
| 146 | 1.19.27.16 | Test: view/print/save a report | 1.43h | 2009-05-01 | 2009-05-01 | 145 |  | 2009-03-19 | 2009-03-19 | 1.43h | 41.11d | 0d |  | Marlize [70%] | 1h |  | MDSS062 | 201 |
| 147 | 1.19.27.17 | Test: change linked report | 1.43h | 2009-05-01 | 2009-05-01 | 146 |  | 2009-03-19 | 2009-03-19 | 1.43h | 41.11d | 0d |  | Marlize [70%] | 1h |  | MDSS062 | 202 |
| 148 | 1.19.27.18 | Submit defects: deploy query | 2.86h | 2009-05-01 | 2009-05-04 | 147 |  | 2009-03-19 | 2009-03-19 | 2.86h | 41.11d | 0d |  | Marlize [70%] | 2h |  |  | 203 |
| 149 | 1.19.27.19 | Write change request: Dynamic query | 5.71h | 2009-05-04 | 2009-05-04 | 148 |  | 2009-03-19 | 2009-03-20 | 5.71h | 41.11d |  |  | Marlize [70%] | 4h |  |  | 204 |
| 150 | 1.20 | **Finalise Query Use Cases** | 28.43d | 2009-02-23 A | 2009-04-02 A |  | 100% | 2009-02-13 | 2009-04-08 | 38.11d |  |  |  |  | 77.6h | 77.6h |  | 205 |
| 151 | 1.20.1 | UC: Individual Cases - query | 11.43h | 2009-02-23 A | 2009-02-24 A |  | 100% | 2009-02-18 | 2009-02-20 | 11.43h |  |  | start no earlier than 2009-02-21 | Miguel [70%] | 8h | 8h | MDSS128 | 208 |
| 152 | 1.20.2 | UC: Aggregated Cases - query | 11.43h | 2009-02-25 A | 2009-02-27 A | 83 | 100% | 2009-02-13 | 2009-02-17 | 11.43h |  |  | start no earlier than 2009-02-24 | Miguel [70%] | 8h | 8h | MDSS129 | 206 |
| 153 | 1.20.3 | UC: Indicator survey - query | 11.43h | 2009-03-03 A | 2009-03-04 A | 152 | 100% | 2009-02-17 | 2009-02-18 | 11.43h |  |  | start no earlier than 2009-03-03 | Miguel [70%] | 8h | 8h | MDSS140 | 207 |
| 154 | 1.20.4 | UC: IRS - query | 17.14h | 2009-03-12 A | 2009-03-16 A | 151, 83 | 100% | 2009-02-20 | 2009-02-24 | 22.86h |  |  | finish no earlier than 2009-03-16 | Marlize [93.3%] | 16h | 16h | MDSS132 | 209 |
| 155 | 1.20.5 | UC: ITN Facility distribution - query | 11.43h | 2009-03-23 A | 2009-03-24 A |  | 100% | 2009-04-01 | 2009-04-02 | 11.43h |  |  | start no earlier than 2009-03-23 | Marlize [70%] | 8h | 8h | MDSS135 | 210 |
| 156 | 1.20.6 | UC: ITN Community distribution - query | 8h | 2009-03-24 A | 2009-03-25 A | 155 | 100% |  |  |  |  |  |  | Marlize [70%] | 5.6h | 5.6h | MDSS137 |  |
| 157 | 1.20.7 | UC: ITN household use - query | 11.43h | 2009-03-25 A | 2009-03-26 A | 156 | 100% | 2009-04-02 | 2009-04-06 | 11.43h |  |  |  | Marlize [70%] | 8h | 8h | MDSS138 | 211 |
| 158 | 1.20.8 | UC: IPT individual - query | 11.43h | 2009-03-26 A | 2009-03-30 A | 157 | 100% | 2009-04-06 | 2009-04-07 | 11.43h |  |  |  | Marlize [70%] | 8h | 8h | MDSS130 | 212 |
| 159 | 1.20.9 | UC: IPT aggregated - query | 11.43h | 2009-04-01 A | 2009-04-02 A | 158 | 100% | 2009-04-07 | 2009-04-08 | 11.43h |  |  | start no earlier than 2009-04-01 | Marlize [70%] | 8h | 8h | MDSS131 | 213 |

| ID | WBS | Task | Duration | Start | Finish | Predecessors | Complete | Remaining | Baseline start | Baseline finish | Baseline duration | Total slack | Free slack | Constraint | Resources | Work | Actual work | Cost | Baseline cost | Actual cost | Text4 | Text1 | Text2 |
| --- | --- | --- | --- | --- | --- | --- | --- | --- | --- | --- | --- | --- | --- | --- | --- | --- | --- | --- | --- | --- | --- | --- | --- |
| 160 | 1.21 | **Complete Development** | 78d? | 2009-03-09 A | 2009-06-24 |  | 14% | 67.19d? | 2009-03-02 | 2009-05-28 | 63.25d? | 4d |  |  |  | 1360h | 72h | 89,240 | 172,960 | 2,760 | 214 |  |  |
| 161 | 1.21.1 | **Generic Development** | 55d? | 2009-03-09 A | 2009-05-22 |  | 41% | 32.44d? | 2009-03-05 | 2009-04-14 | 28.76d? | 18d |  |  |  | 264h | 48h | 12,880 | 31,280 |  | 215 |  |  |
| 162 | 1.21.1.1 | Dev: Reconstruct saved query | 47.06h | 2009-04-15 | 2009-04-22 | 13 |  |  | 2009-03-12 | 2009-03-20 | 47.06h | 12.65d | 0d | start no earlier than 2009-04-13 | Nathan [85%] | 40h |  | 4,600 | 4,600 |  | 216 | SYS06-4 |  |
| 163 | 1.21.1.2 | Dev: Configure system variables | 9.41h | 2009-04-22 | 2009-04-24 | 50, 162 |  |  | 2009-03-23 | 2009-03-24 | 8h | 12.65d | 0d |  | Nathan [85%] | 8h |  | 920 | 920 |  | 218 | MDSS109 | 1 day |
| 164 | 1.21.1.3 | Dev: maintain catalogues | 28.23h | 2009-04-24 | 2009-04-29 | 163 |  |  | 2009-03-27 | 2009-04-02 | 28.23h | 12.65d | 0d |  | Nathan [85%] | 24h |  | 2,760 | 2,760 |  | 219 | MDSS103 |  |
| 165 | 1.21.1.4 | Dev: Epi week - set or change | 16h | 2009-04-28 | 2009-04-29 | 196 |  |  | 2009-03-09 | 2009-03-12 | 18.82h | 27d | 0d | start no earlier than 2009-03-17 | Eric | 16h |  |  | 1,840 |  | 220 | MDSS119 | 2 days |
| 166 | 1.21.1.5 | Dev: define season start and end dates | 16h | 2009-04-30 | 2009-05-01 | 165 |  |  | 2009-03-12 | 2009-03-16 | 18.82h | 27d | 1.12d | start no earlier than 2009-04-13 | Eric | 16h |  |  | 1,840 |  | 221 | MDSS127 | 2 days |
| 167 | 1.21.1.6 | Dev: enter/maintain people in the system | 16h | 2009-04-14 | 2009-04-15 | 42 |  |  | 2009-03-16 | 2009-03-19 | 18.82h | 27d | 0d | start no earlier than 2009-04-14 | Eric | 16h |  |  | 1,840 |  | 222 | MDSS114 |  |
| 168 | 1.21.1.7 | Dev: create synonyms for imported Geo entities | 32h | 2009-05-05 | 2009-05-11 | 169, 166 |  |  | 2009-03-13 | 2009-03-19 | 32h | 25.88d | 0d |  | Eric | 32h |  |  | 3,680 |  | 223 | MDSS112 |  |
| 169 | 1.21.1.8 | Dev: User Admin Screen for account management | 3.53d? | 2009-04-29 | 2009-05-05 | 42, 164 |  |  | 2009-04-06 | 2009-04-08 | 3d? | 12.65d | 0d | start no earlier than 2009-03-17 | Nathan [85%] | 24h |  | 2,760 |  |  | 224 |  | 3 days |
| 170 | 1.21.1.9 | Dev: user Admin Screen for Role assignment | 2.35d? | 2009-05-05 | 2009-05-07 | 169 |  |  | 2009-04-02 | 2009-04-06 | 2.35d? | 12.65d | 0d | start no earlier than 2009-03-06 | Nathan [85%] | 16h |  | 1,840 | 1,840 |  | 225 | MDSS142 | 2 days |
| 171 | 1.21.1.10 | Dev: Add localisable character attributes | 16h | 2009-05-11 | 2009-05-13 | 170, 168 |  |  | 2009-04-06 | 2009-04-09 | 18.82h | 25.88d | 0d |  | Eric | 16h |  |  | 1,840 |  | 226 | SYS01-1 |  |
| 172 | 1.21.1.11 | Dev: CRUD on localisable fields | 164h | 2009-03-09 A | 2009-04-06 A | 37 | 100% |  | 2009-03-05 | 2009-03-12 | 48h |  |  | finish no earlier than 2009-03-30 | Eric | 48h | 48h |  |  |  | 227 | SYS01-2 |  |
| 173 | 1.21.1.12 | Change geo root | 8h | 2009-05-22 | 2009-05-22 | 163, 192 |  |  | 2009-04-01 | 2009-04-03 | 20h | 4d | 0d |  | Naifeh | 8h |  |  | 1,840 |  | 230 | MDSS122 |  |
| 174 | 1.21.2 | **Indicator survey** | 21d | 2009-04-10 A | 2009-05-08 |  | 11% | 18.67d | 2009-03-19 | 2009-03-31 | 8d | 6d |  |  |  | 72h | 8h | 3,680 | 8,280 | 920 | 231 |  |  |
| 175 | 1.21.2.1 | Dev: BE - Indicator survey - CRUD | 16h | 2009-04-10 A | 2009-04-13 | 179 | 50% | 8h |  |  |  | 8.75d | 0d | start no earlier than 2009-04-10 | Justin | 16h | 8h | 1,840 |  | 920 | 367 | MDSS026 |  |
| 176 | 1.21.2.2 | Dev: GUI - Indicator survey - CRUD | 16h | 2009-04-15 | 2009-04-16 | 175, 180 |  |  | 2009-03-24 | 2009-03-31 | 40h | 22d | 7d | finish no earlier than 2009-03-30 | Darrell | 16h |  | 1,840 | 3,680 |  | 232 | MDSS026 |  |
| 177 | 1.21.2.3 | Dev - Indicator survey - dynamic query | 40h | 2009-05-04 | 2009-05-08 | 182 |  |  | 2009-03-19 | 2009-03-27 | 50h | 4d | 0d | start no earlier than 2009-04-04 | Naifeh | 40h |  |  | 4,600 |  | 233 | MDSS140 |  |
| 178 | 1.21.3 | **Case Surveilance** | 54.35d | 2009-03-30 A | 2009-06-12 |  | 12% | 48.07d | 2009-03-02 | 2009-05-07 | 48.25d | 12.65d |  |  |  | 352h | 16h | 27,600 | 51,520 | 1,840 | 234 |  |  |
| 179 | 1.21.3.1 | Dev: BE - aggregated cases - CRUD | 48h | 2009-03-30 A | 2009-04-06 A | 49 | 100% |  | 2009-03-02 | 2009-03-06 | 40h |  |  | start no earlier than 2009-03-30 | Justin [33.3%] | 16h | 16h | 1,840 | 4,600 | 1,840 | 235 | MDSS002 | 5 days |
| 180 | 1.21.3.2 | Dev: GUI - aggregated cases - CRUD | 16h | 2009-04-13 | 2009-04-14 | 179, 50 |  |  |  |  |  | 22d | 0d | start no earlier than 2009-04-13 | Darrell | 16h |  | 1,840 |  |  | 368 | MDSS002 |  |
| 181 | 1.21.3.3 | Dev: calculate CFR | 8h | 2009-05-13 | 2009-05-14 | 171 |  |  | 2009-03-19 | 2009-03-25 | 37.65h | 25.88d | 0d |  | Eric | 8h |  |  | 3,680 |  | 236 | MDSS087 | 4 days |
| 182 | 1.21.3.4 | Dev: aggregated cases - dynamic query | 40h | 2009-04-27 | 2009-05-01 | 152, 14 |  |  | 2009-03-09 | 2009-03-13 | 40h | 4d | 0d | start no earlier than 2009-03-17 | Naifeh | 40h |  |  | 4,600 |  | 237 | MDSS129 | 5 days |
| 183 | 1.21.3.5 | Dev: Input or modify population data | 37.65h | 2009-05-07 | 2009-05-14 | 170 |  |  | 2009-03-16 | 2009-03-19 | 32h | 12.65d | 0d | start no earlier than 2009-03-05 | Nathan [85%] | 32h |  | 3,680 | 3,680 |  | 238 | MDSS003 | 4 days |
| 184 | 1.21.3.6 | Dev: Import population or annual growth rate data | 47.06h | 2009-05-14 | 2009-05-22 | 183 |  |  | 2009-03-20 | 2009-03-26 | 40h | 12.65d | 0d |  | Nathan [85%] | 40h |  | 4,600 | 4,600 |  | 239 | MDSS083 |  |
| 185 | 1.21.3.7 | Dev: input/modify outbreak thresholds | 37.65h | 2009-05-22 | 2009-05-28 | 184 |  |  | 2009-03-27 | 2009-04-01 | 32h | 12.65d | 0d |  | Nathan [85%] | 32h |  | 3,680 | 3,680 |  | 240 | MDSS105 | 5 days |
| 186 | 1.21.3.8 | Dev :import outbreak thresholds | 37.65h | 2009-05-28 | 2009-06-04 | 185 |  |  | 2009-04-02 | 2009-04-07 | 32h | 12.65d | 0d |  | Nathan [85%] | 32h |  | 3,680 | 3,680 |  | 241 | MDSS085 | 5 days |
| 187 | 1.21.3.9 | Dev: Calculate annual or seasonal population | 47.06h | 2009-06-04 | 2009-06-12 | 221, 186 |  |  | 2009-04-29 | 2009-05-07 | 50h | 12.65d |  |  | Nathan [85%] | 40h |  | 4,600 | 4,600 |  | 242 | MDSS073 | 5 days |
| 188 | 1.21.3.10 | Dev: calculate incidence | 8h | 2009-05-14 | 2009-05-15 | 181 |  |  | 2009-03-25 | 2009-04-02 | 47.06h | 25.88d | 0d |  | Eric | 8h |  |  | 4,600 |  | 243 | MDSS086 | 5 days |
| 189 | 1.21.3.11 | Dev: BE - individual cases - CRUD | 16h | 2009-04-24 | 2009-04-27 | 199 |  |  |  |  |  | 8.75d | 0d | start no earlier than 2009-03-26 | Justin | 16h |  | 1,840 |  |  | 369 | MDSS001 |  |
| 190 | 1.21.3.12 | Dev: GUI - individual cases - CRUD | 16h | 2009-04-28 | 2009-04-29 | 189, 176 |  |  | 2009-04-08 | 2009-04-14 | 40h | 15d | 11d | start no earlier than 2009-04-02 | Darrell | 16h |  | 1,840 | 4,600 |  | 244 | MDSS001 | 5 days |
| 191 | 1.21.3.13 | Dev: Outbreak notification | 16h | 2009-05-15 | 2009-05-19 | 188 |  |  | 2009-04-02 | 2009-04-10 | 47.06h | 25.88d | 0d |  | Eric | 16h |  |  | 4,600 |  | 245 | MDSS124 | 5 days |
| 192 | 1.21.3.14 | Dev: individual case - dynamic query | 40h | 2009-05-15 | 2009-05-21 | 190, 151, 203 |  |  | 2009-04-15 | 2009-04-21 | 40h | 4d | 0d |  | Naifeh | 40h |  |  | 4,600 |  | 246 | MDSS128 | 5 days |

| ID | WBS | Task | Duration | Start | Finish | Predecessors | Baseline start | Baseline finish | Baseline duration | Total slack | Free slack | Constraint | Resources | Work | Cost | Baseline cost | Text4 | Text1 | Text2 | Text3 |
| --- | --- | --- | --- | --- | --- | --- | --- | --- | --- | --- | --- | --- | --- | --- | --- | --- | --- | --- | --- | --- |
| 193 | 1.21.4 | **Intervention monitoring** | 52d | 2009-04-14 | 2009-06-24 |  | 2009-03-27 | 2009-05-28 | 43.75d | 4d |  |  |  | 640h | 41,400 | 75,440 | 247 |  |  |  |
| 194 | 1.21.4.1 | **IRS** | 23d | 2009-04-14 | 2009-05-14 |  | 2009-03-27 | 2009-05-21 | 38.75d | 8.75d |  |  |  | 216h | 13,800 | 28,520 | 248 |  |  |  |
| 195 | 1.21.4.1.1 | Dev: enter/maintain spray team member | 32h | 2009-04-16 | 2009-04-21 | 167 | 2009-04-22 | 2009-04-27 | 32h | 27d | 0d | start no earlier than 2009-03-20 | Eric | 32h |  | 3,680 | 249 | MDSS113 |  |  |
| 196 | 1.21.4.1.2 | Dev: enter/maintain IRS teams | 32h | 2009-04-22 | 2009-04-27 | 195 | 2009-04-28 | 2009-05-01 | 32h | 27d | 0d |  | Eric | 32h |  | 3,680 | 250 | MDSS141 |  |  |
| 197 | 1.21.4.1.3 | Dev: BE - input or modify IRS targets | 24h | 2009-04-16 | 2009-04-20 | 201 | 2009-03-27 | 2009-04-02 | 30h | 8.75d | 0d |  | Justin | 24h | 2,760 | 2,760 | 251 | MDSS028 |  |  |
| 198 | 1.21.4.1.4 | Dev: GUI - input or modify IRS targets | 24h | 2009-04-21 | 2009-04-23 | 197 | 2009-05-07 | 2009-05-12 | 30h | 46d | 0d | start no earlier than 2009-04-01 | Darrell | 24h | 2,760 | 2,760 | 252 | MDSS028 |  |  |
| 199 | 1.21.4.1.5 | Dev: BE - Configure items relating to application rate | 24h | 2009-04-21 | 2009-04-23 | 197 | 2009-04-02 | 2009-04-10 | 50h | 8.75d | 0d |  | Justin | 24h | 2,760 | 4,600 | 253 | MDSS106 |  |  |
| 200 | 1.21.4.1.6 | Dev: GUI - Configure items relating to application rate | 16h | 2009-04-24 | 2009-04-27 | 198, 199 | 2009-05-13 | 2009-05-15 | 20h | 46d |  |  | Darrell | 16h | 1,840 | 1,840 | 254 | MDSS106 |  |  |
| 201 | 1.21.4.1.7 | Dev: BE - IRS - CRUD | 16h | 2009-04-14 | 2009-04-15 | 175 | 2009-04-14 | 2009-04-20 | 28.23h | 8.75d | 0d | start no earlier than 2009-03-23 | Justin | 16h | 1,840 | 2,760 | 255 | MDSS027 |  |  |
| 202 | 1.21.4.1.8 | Dev: GUI - IRS - CRUD | 16h | 2009-04-16 | 2009-04-17 | 201 |  |  |  | 42.37d | 19.25d | start no earlier than 2009-04-10 | Darrell | 16h | 1,840 |  | 370 | MDSS027 |  |  |
| 203 | 1.21.4.1.9 | Dev: IRS - dynamic query | 32h | 2009-05-11 | 2009-05-14 | 154, 177 | 2009-04-10 | 2009-04-17 | 40h | 4d | 0d | start no earlier than 2009-03-16 | Naifeh | 32h |  | 3,680 | 257 | MDSS132 |  |  |
| 204 | 1.21.4.2 | **Larvaciding** | 4d | 2009-05-15 | 2009-05-21 |  | 2009-04-10 | 2009-04-17 | 4.71d | 8.75d |  |  |  | 32h | 3,680 | 3,680 | 258 |  |  |  |
| 205 | 1.21.4.2.1 | Dev: BE - larviciding - CRUD | 16h | 2009-05-15 | 2009-05-19 | 220 |  |  |  | 8.75d | 0d | start no earlier than 2009-03-14 | Justin | 16h | 1,840 |  | 371 | MDSS031 |  |  |
| 206 | 1.21.4.2.2 | Dev: GUI - larviciding - CRUD | 16h | 2009-05-19 | 2009-05-21 | 205 | 2009-04-10 | 2009-04-17 | 37.65h | 28.75d |  | start no earlier than 2009-03-17 | Darrell | 16h | 1,840 | 3,680 | 259 | MDSS031 | 8 days |  |
| 207 | 1.21.4.3 | **ITN** | 31.5d | 2009-04-30 | 2009-06-12 |  | 2009-04-17 | 2009-05-22 | 25.53d | 8.75d |  |  |  | 216h | 11,040 | 23,000 | 260 |  |  |  |
| 208 | 1.21.4.3.1 | Dev: BE - ITN aggregated data - CRUD | 16h | 2009-04-30 | 2009-05-04 | 223 | 2009-04-17 | 2009-04-27 | 47.06h | 8.75d | 0d |  | Justin | 16h | 1,840 | 4,600 | 261 | MDSS080 | 5 days |  |
| 209 | 1.21.4.3.2 | Dev: GUI - ITN aggregated data - CRUD | 16h | 2009-05-04 | 2009-05-06 | 208 |  |  |  | 16.5d | 10.75d |  | Darrell | 16h | 1,840 |  | 372 | MDSS080 |  |  |
| 210 | 1.21.4.3.3 | Dev: ITN aggregated data - query | 40h | 2009-05-25 | 2009-05-29 | 209, 203, 173 | 2009-04-27 | 2009-04-28 | 8h | 4d | 0d |  | Naifeh | 40h |  |  | 262 | MDSS136 |  |  |
| 211 | 1.21.4.3.4 | Dev: BE - ITN facility distribution - CRUD | 16h | 2009-05-19 | 2009-05-21 | 205 | 2009-04-28 | 2009-05-07 | 56.47h | 8.75d | 0d |  | Justin | 16h | 1,840 | 5,520 | 263 | MDSS030 | 5 days |  |
| 212 | 1.21.4.3.5 | Dev: GUI - ITN facility distribution - CRUD | 16h | 2009-05-21 | 2009-05-25 | 211, 209 |  |  |  | 26.75d |  |  | Darrell | 16h | 1,840 |  | 373 | MDSS030 |  |  |
| 213 | 1.21.4.3.6 | Dev: BE - ITN community distribution - CRUD | 8h | 2009-05-21 | 2009-05-22 | 211 | 2009-05-07 | 2009-05-13 | 37.65h | 8.75d | 0d |  | Justin | 8h | 920 | 3,680 | 264 | MDSS079 | 5 days |  |
| 214 | 1.21.4.3.7 | Dev: GUI - ITN community distribution - CRUD | 8h | 2009-05-22 | 2009-05-25 | 213 |  |  |  | 8.75d | 0d |  | Darrell | 8h | 920 |  | 374 | MDSS079 |  |  |
| 215 | 1.21.4.3.8 | Dev: ITN by facility/community - query | 40h | 2009-06-01 | 2009-06-05 | 155, 210, 214 | 2009-05-13 | 2009-05-14 | 8h | 4d | 0d |  | Naifeh | 40h |  |  | 265 | MDSS135 |  |  |
| 216 | 1.21.4.3.9 | Dev: BE - ITN by household - CRUD | 8h | 2009-05-22 | 2009-05-25 | 213 | 2009-05-14 | 2009-05-22 | 47.06h | 15.75d | 0d | start no earlier than 2009-03-21 | Justin | 8h | 920 | 4,600 | 266 | MDSS082 | 5 days | 10 |
| 217 | 1.21.4.3.10 | Dev: GUI - ITN by household - CRUD | 8h | 2009-05-25 | 2009-05-26 | 216, 214 |  |  |  | 25.75d |  |  | Darrell | 8h | 920 |  | 375 | MDSS082 |  | 10 |
| 218 | 1.21.4.3.11 | Dev: ITN by household - query | 40h | 2009-06-08 | 2009-06-12 | 196, 157, 215 | 2009-05-04 | 2009-05-08 | 40h | 4d | 0d | start no earlier than 2009-04-10 | Naifeh | 40h |  | 4,600 | 267 | MDSS138 |  | 10 |

| ID | WBS | Task | Type | Duration | Start | Finish | Predecessors | Complete | Baseline start | Baseline finish | Baseline duration | Total slack | Free slack | Constraint | Resources | Work | Actual work | Cost | Baseline cost | Text4 | Text1 | Text3 | Text2 |
| --- | --- | --- | --- | --- | --- | --- | --- | --- | --- | --- | --- | --- | --- | --- | --- | --- | --- | --- | --- | --- | --- | --- | --- |
| 219 | 1.21.4.4 | **Intervention Planning** |  | 7.5d | 2009-05-11 | 2009-05-20 |  |  | 2009-04-17 | 2009-04-28 | 7.5d | 8.75d |  |  |  | 48h |  | 5,520 | 5,520 | 268 |  |  |  |
| 220 | 1.21.4.4.1 | Dev: BE - Intervention planning |  | 30h | 2009-05-11 | 2009-05-15 | 301 |  | 2009-04-17 | 2009-04-23 | 30h | 8.75d | 0d |  | Justin [80%] | 24h |  | 2,760 | 2,760 | 269 | MDSS077 |  |  |
| 221 | 1.21.4.4.2 | Dev: GUI - Intervention planning |  | 30h | 2009-05-15 | 2009-05-20 | 220, 202 |  | 2009-04-23 | 2009-04-28 | 30h | 23.12d | 10.47d | start no earlier than 2009-04-16 | Darrell [80%] | 24h |  | 2,760 | 2,760 | 270 | MDSS077 |  |  |
| 222 | 1.21.4.5 | **IPT** |  | 42d | 2009-04-28 | 2009-06-24 |  |  | 2009-04-23 | 2009-05-28 | 25d | 4d |  |  |  | 128h |  | 7,360 | 14,720 | 271 |  |  |  |
| 223 | 1.21.4.5.1 | Dev: BE - IPT aggregated - CRUD |  | 20h | 2009-04-28 | 2009-04-30 | 189 |  | 2009-04-23 | 2009-04-27 | 20h | 8.75d | 0d |  | Justin [80%] | 16h |  | 1,840 | 1,840 | 272 | MDSS069 |  |  |
| 224 | 1.21.4.5.2 | Dev: GUI - IPT aggregated - CRUD |  | 20h | 2009-04-30 | 2009-05-04 | 223 |  | 2009-05-21 | 2009-05-25 | 20h | 33d | 18.75d |  | Darrell [80%] | 16h |  | 1,840 | 1,840 | 273 | MDSS069 |  |  |
| 225 | 1.21.4.5.3 | Dev: IPT aggregated - query |  | 32h | 2009-06-15 | 2009-06-18 | 224, 218 |  | 2009-04-27 | 2009-05-04 | 40h | 4d | 0d |  | Naifeh | 32h |  |  | 3,680 | 274 | MDSS131 |  |  |
| 226 | 1.21.4.5.4 | Dev: BE - IPT individual - CRUD |  | 20h | 2009-05-27 | 2009-05-29 | 229 |  | 2009-05-04 | 2009-05-07 | 20h | 15.75d | 0d | start no earlier than 2009-04-19 | Justin [80%] | 16h |  | 1,840 | 1,840 | 275 | MDSS081 | 10 |  |
| 227 | 1.21.4.5.5 | Dev: GUI - IPT individual - CRUD |  | 20h | 2009-05-29 | 2009-06-03 | 224, 226 |  | 2009-05-25 | 2009-05-28 | 20h | 15.75d | 11.75d |  | Darrell [80%] | 16h |  | 1,840 | 1,840 | 276 | MDSS081 | 10 |  |
| 228 | 1.21.4.5.6 | Dev: IPT individual - query |  | 32h | 2009-06-19 | 2009-06-24 | 227, 225 |  | 2009-05-07 | 2009-05-14 | 40h | 4d |  |  | Naifeh | 32h |  |  | 3,680 | 277 | MDSS130 | 10 |  |
| 229 | 1.21.5 | Dev: BE - Stock Control |  | 16h | 2009-05-25 | 2009-05-27 | 216 |  | 2009-04-20 | 2009-04-23 | 28.23h | 15.75d | 0d | start no earlier than 2009-03-25 | Justin | 16h |  | 1,840 | 2,760 | 278 | MDSS032 |  |  |
| 230 | 1.21.6 | Dev: GUI - Stock Control |  | 16h | 2009-05-27 | 2009-05-29 | 229 |  | 2009-05-11 | 2009-05-14 | 32h | 22.75d |  |  | Darrell | 16h |  | 1,840 | 3,680 | 279 | MDSS032 |  |  |
| 231 | 2 | Dev: Backup the data and configuration file |  | 40h | 2009-05-19 | 2009-05-26 | 191 |  | 2009-05-15 | 2009-05-21 | 40h | 25.88d |  |  | Eric | 40h |  |  | 4,600 | 280 | MDSS065 |  |  |
| 232 | 3 | Dev: Select the user language | milestone | 0h | 2009-02-02 A | 2009-02-02 A |  | 100% | 2009-02-02 | 2009-02-02 | 0h |  |  |  |  |  |  |  |  | 281 | MDSS118 |  |  |
| 233 | 4 | **Complete Test Cases** |  | 39.5d? | 2009-02-11 A | 2009-04-07 A |  | 100% | 2009-02-11 | 2009-04-01 | 35.25d? |  |  |  |  | 191.2h | 191.2h |  |  | 283 |  |  |  |
| 234 | 4.1 | **Entomology** |  | 3d? | 2009-03-11 A | 2009-03-13 A |  | 100% | 2009-03-17 | 2009-03-23 | 4d? |  |  |  |  | 12h | 12h |  |  | 284 |  |  |  |
| 235 | 4.1.1 | TC: Adult knock down assay |  | 1d? | 2009-03-11 A | 2009-03-11 A |  | 100% | 2009-03-18 | 2009-03-19 | 1d? |  |  | start no earlier than 2009-03-11 | Mike [50%] | 4h | 4h |  |  | 286 | MDSS006 |  |  |
| 236 | 4.1.2 | TC: Larvae discriminating dose assay |  | 1d? | 2009-03-12 A | 2009-03-12 A | 235 | 100% | 2009-03-19 | 2009-03-20 | 1d? |  |  |  | Mike [50%] | 4h | 4h |  |  | 287 | MDSS008 | 10 |  |
| 237 | 4.1.3 | TC: Efficacy assay |  | 1d? | 2009-03-13 A | 2009-03-13 A | 236 | 100% | 2009-03-20 | 2009-03-23 | 1d? |  |  |  | Mike [50%] | 4h | 4h |  |  | 288 | MDSS025 |  |  |
| 238 | 4.2 | **System** |  | 18d | 2009-02-11 A | 2009-03-06 A |  | 100% | 2009-02-11 | 2009-02-26 | 11.25d |  |  |  |  | 48h | 48h |  |  | 289 |  |  |  |
| 239 | 4.2.1 | TC: Configure system variables |  | 10h | 2009-02-12 A | 2009-02-13 A | 252 | 100% | 2009-02-12 | 2009-02-13 | 10h |  |  | start no earlier than 2009-02-11 | Sanika [40%] | 4h | 4h |  |  | 290 | MDSS109 |  | 1 day |
| 240 | 4.2.2 | TC: maintain catalogues |  | 10h | 2009-02-13 A | 2009-02-16 A | 239 | 100% | 2009-02-13 | 2009-02-16 | 10h |  |  |  | Sanika [40%] | 4h | 4h |  |  | 291 | MDSS103 |  |  |
| 241 | 4.2.3 | TC: Epi week - set or change |  | 10h | 2009-02-16 A | 2009-02-17 A | 240 | 100% | 2009-02-16 | 2009-02-17 | 10h |  |  |  | Sanika [40%] | 4h | 4h |  |  | 292 | MDSS119 |  | 2 days |
| 242 | 4.2.4 | TC: define season start and end dates |  | 10h | 2009-02-23 A | 2009-02-24 A | 241 | 100% | 2009-02-18 | 2009-02-19 | 10h |  |  | start no earlier than 2009-02-21 | Sanika [40%] | 4h | 4h |  |  | 293 | MDSS127 |  | 2 days |
| 243 | 4.2.5 | TC: enter/maintain people in the system |  | 10h | 2009-02-24 A | 2009-02-25 A | 242 | 100% | 2009-02-19 | 2009-02-20 | 10h |  |  | start no earlier than 2009-02-21 | Sanika [40%] | 4h | 4h |  |  | 294 | MDSS114 |  |  |
| 244 | 4.2.6 | TC: create synonyms for imported Geo entities |  | 10h | 2009-02-25 A | 2009-02-26 A | 243 | 100% | 2009-02-20 | 2009-02-23 | 10h |  |  |  | Sanika [40%] | 4h | 4h |  |  | 295 | MDSS112 |  |  |
| 245 | 4.2.7 | TC: User Admin Screen for account management |  | 10h | 2009-02-11 A | 2009-02-12 A |  | 100% | 2009-02-11 | 2009-02-12 | 10h |  |  | start no earlier than 2009-02-11 | Saul [40%] | 4h | 4h |  |  | 296 | MDSS142 |  | 3 days |
| 246 | 4.2.8 | TC: user Admin Screen for Role assignment |  | 10h | 2009-02-12 A | 2009-02-13 A | 245 | 100% | 2009-02-12 | 2009-02-13 | 10h |  |  | start no earlier than 2009-02-01 | Saul [40%] | 4h | 4h |  |  | 297 | MDSS144 |  | 2 days |
| 247 | 4.2.9 | TC: Change date/time format |  | 10h | 2009-03-02 A | 2009-03-03 A | 246 | 100% | 2009-02-19 | 2009-02-20 | 10h |  |  | start no earlier than 2009-03-02 | Saul [40%] | 4h | 4h |  |  | 301 | MDSS120 |  |  |
| 248 | 4.2.10 | TC: Change geo root |  | 10h | 2009-03-03 A | 2009-03-04 A | 247 | 100% | 2009-02-20 | 2009-02-23 | 10h |  |  |  | Saul [40%] | 4h | 4h |  |  | 302 | MDSS122 |  |  |
| 249 | 4.2.11 | TC: Select the user language |  | 10h | 2009-03-04 A | 2009-03-05 A | 248 | 100% | 2009-02-23 | 2009-02-24 | 10h |  |  |  | Saul [40%] | 4h | 4h |  |  | 303 | MDSS118 |  |  |
| 250 | 4.2.12 | TC: Change date/time format |  | 10h | 2009-03-05 A | 2009-03-06 A | 249 | 100% | 2009-02-25 | 2009-02-26 | 10h |  |  |  | Saul [40%] | 4h | 4h |  |  | 304 | MDSS120 |  |  |

| ID | WBS | Task | Duration | Start | Finish | Predecessors | Complete | Baseline start | Baseline finish | Baseline duration | Constraint | Resources | Work | Actual work | Text4 | Text1 | Text2 | Text3 |
| --- | --- | --- | --- | --- | --- | --- | --- | --- | --- | --- | --- | --- | --- | --- | --- | --- | --- | --- |
| 251 | 4.3 | **Indicator Survey** | 1.25d | 2009-02-11 A | 2009-02-12 A |  | 100% | 2009-02-11 | 2009-02-12 | 1.25d |  |  | 4h | 4h | 305 |  |  |  |
| 252 | 4.3.1 | TC: Indicator survey - CRUD | 10h | 2009-02-11 A | 2009-02-12 A |  | 100% | 2009-02-11 | 2009-02-12 | 10h | start no earlier than 2009-02-11 | Sanika [40%] | 4h | 4h | 306 | MDSS026 |  |  |
| 253 | 4.4 | **Case Surveilance** | 154h | 2009-03-11 A | 2009-04-07 A |  | 100% | 2009-03-12 | 2009-03-25 | 68.58h |  |  | 36h | 36h | 308 |  |  |  |
| 254 | 4.4.1 | TC: aggregated cases - CRUD | 8h | 2009-03-11 A | 2009-03-12 A | 282 | 100% | 2009-03-12 | 2009-03-13 | 5.71h | start no earlier than 2009-03-10 | Dave [50%] | 4h | 4h | 309 | MDSS002 | 5 days |  |
| 255 | 4.4.2 | TC: calculate CFR | 8h | 2009-03-12 A | 2009-03-13 A | 254 | 100% | 2009-03-13 | 2009-03-16 | 5.71h |  | Dave [50%] | 4h | 4h | 310 | MDSS087 | 4 days |  |
| 256 | 4.4.3 | TC: aggregated cases - dynamic query | 8h | 2009-03-13 A | 2009-03-16 A | 255 | 100% | 2009-03-16 | 2009-03-16 | 5.71h |  | Dave [50%] | 4h | 4h | 311 | MDSS129 | 5 days |  |
| 257 | 4.4.4 | TC: Input or modify population data | 8h | 2009-03-16 A | 2009-03-17 A | 256 | 100% | 2009-03-16 | 2009-03-17 | 5.71h | start no earlier than 2009-02-01 | Dave [50%] | 4h | 4h | 312 | MDSS003 | 4 days |  |
| 258 | 4.4.5 | TC: Import population or annual growth rate data | 8h | 2009-03-17 A | 2009-03-18 A | 257 | 100% | 2009-03-17 | 2009-03-18 | 5.71h |  | Dave [50%] | 4h | 4h | 313 | MDSS083 |  |  |
| 259 | 4.4.6 | TC: input/modify outbreak thresholds | 8h | 2009-03-18 A | 2009-03-19 A | 258 | 100% | 2009-03-18 | 2009-03-18 | 5.71h |  | Dave [50%] | 4h | 4h | 314 | MDSS105 | 5 days |  |
| 260 | 4.4.7 | TC :import outbreak thresholds | 8h | 2009-03-19 A | 2009-03-20 A | 259 | 100% | 2009-03-18 | 2009-03-19 | 5.71h |  | Dave [50%] | 4h | 4h | 315 | MDSS085 | 5 days |  |
| 261 | 4.4.8 | TC: Calculate annual or seasonal population | 8h | 2009-03-20 A | 2009-03-23 A | 260 | 100% | 2009-03-19 | 2009-03-20 | 5.71h |  | Dave [50%] | 4h | 4h | 316 | MDSS073 | 5 days |  |
| 262 | 4.4.9 | TC: individual case - query | 4h | 2009-04-07 A | 2009-04-07 A |  | 100% | 2009-03-24 | 2009-03-25 | 5.71h | start no earlier than 2009-04-07 | Dave | 4h | 4h | 320 | MDSS128 | 5 days |  |
| 263 | 4.5 | **Intervention monitoring** | 309.72h | 2009-02-11 A | 2009-04-06 A |  | 100% | 2009-02-11 | 2009-04-01 | 282.04h |  |  | 91.2h | 91.2h | 321 |  |  |  |
| 264 | 4.5.1 | **IRS** | 114h | 2009-03-16 A | 2009-04-03 A |  | 100% | 2009-03-25 | 2009-03-31 | 34.29h |  |  | 44h | 44h | 322 |  |  |  |
| 265 | 4.5.1.1 | TC: enter/maintain spray team member | 8h | 2009-03-16 A | 2009-03-16 A |  | 100% | 2009-03-25 | 2009-03-25 | 5.71h | start no earlier than 2009-03-16 | Saul [50%] | 4h | 4h | 323 | MDSS113 |  |  |
| 266 | 4.5.1.2 | TC: enter/maintain IRS teams | 8h | 2009-03-17 A | 2009-03-17 A | 265 | 100% | 2009-03-25 | 2009-03-26 | 5.71h |  | Saul [50%] | 4h | 4h | 324 | MDSS141 |  |  |
| 267 | 4.5.1.3 | TC:Indicator survey query | 8h | 2009-03-25 A | 2009-03-25 A | 261, 266 | 100% |  |  |  | start no earlier than 2009-03-25 | Dave [50%] | 4h | 4h | 307 | MDSS140 |  |  |
| 268 | 4.5.1.4 | TC: ITN aggregated data - query | 8h | 2009-03-30 A | 2009-03-30 A | 267, 155 | 100% | 2009-02-25 | 2009-02-26 | 10h | start no earlier than 2009-03-30 | Dave [50%] | 4h | 4h | 333 | MDSS136 |  |  |
| 269 | 4.5.1.5 | TC: ITN by facility - query | 8h | 2009-03-31 A | 2009-03-31 A | 268, 157 | 100% | 2009-03-02 | 2009-03-03 | 10h |  | Dave [50%] | 4h | 4h | 336 | MDSS135 |  |  |
| 270 | 4.5.1.6 | TC: ITN by community - query | 8h | 2009-04-01 A | 2009-04-01 A | 269 | 100% |  |  |  |  | Dave [50%] | 4h | 4h |  | MDSS137 |  |  |
| 271 | 4.5.1.7 | TC: ITN by household - query | 10h | 2009-04-02 A | 2009-04-03 A | 270 | 100% | 2009-03-05 | 2009-03-06 | 10h | start no earlier than 2009-02-09 | Sanika [40%] | 4h | 4h | 338 | MDSS138 |  | 10 |
| 272 | 4.5.1.8 | TC: individual cases - CRUD | 16h | 2009-03-24 A | 2009-03-25 A |  | 100% | 2009-03-23 | 2009-03-23 | 5.71h | finish no earlier than 2009-03-25 | Sanika [25%] | 4h | 4h | 318 | MDSS001 | 5 days |  |
| 273 | 4.5.1.9 | TC: input or modify IRS targets | 8h | 2009-03-17 A | 2009-03-17 A |  | 100% | 2009-03-26 | 2009-03-27 | 5.71h | start no earlier than 2009-03-17 | Saul [50%] | 4h | 4h | 325 | MDSS028 |  |  |
| 274 | 4.5.1.10 | TC: Configure items relating to application rate | 8h | 2009-03-18 A | 2009-03-18 A | 273 | 100% | 2009-03-27 | 2009-03-30 | 5.71h |  | Saul [50%] | 4h | 4h | 326 | MDSS106 |  |  |
| 275 | 4.5.1.11 | TC: IRS - CRUD | 8h | 2009-03-25 A | 2009-03-25 A | 274 | 100% | 2009-03-30 | 2009-03-30 | 5.71h | start no earlier than 2009-03-25 | Saul [50%] | 4h | 4h | 327 | MDSS027 |  |  |

| ID | WBS | Task | Type | Duration | Start | Finish | Predecessors | Complete | Baseline start | Baseline finish | Baseline duration | Total slack | Free slack | Constraint | Resources | Work | Actual work | Cost | Baseline cost | Text4 | Text1 | Text2 | Text3 |
| --- | --- | --- | --- | --- | --- | --- | --- | --- | --- | --- | --- | --- | --- | --- | --- | --- | --- | --- | --- | --- | --- | --- | --- |
| 276 | 4.5.2 | **Larvaciding** |  | 20h | 2009-02-11 A | 2009-02-13 A |  | 100% | 2009-02-11 | 2009-02-13 | 20h |  |  |  |  | 4h | 4h |  |  | 329 |  |  |  |
| 277 | 4.5.2.1 | TC: larviciding - CRUD |  | 20h | 2009-02-11 A | 2009-02-13 A |  | 100% | 2009-02-11 | 2009-02-13 | 20h |  |  | start no earlier than 2009-02-11 | Lars [20%] | 4h | 4h |  |  | 330 | MDSS031 | 8 days |  |
| 278 | 4.5.3 | **ITN** |  | 170h | 2009-02-26 A | 2009-03-27 A |  | 100% | 2009-02-23 | 2009-03-06 | 70h |  |  |  |  | 27.2h | 27.2h |  |  | 331 |  |  |  |
| 279 | 4.5.3.1 | TC: ITN aggregated data - CRUD |  | 10h | 2009-02-26 A | 2009-02-27 A | 244 | 100% | 2009-02-23 | 2009-02-24 | 10h |  |  |  | Sanika [40%] | 4h | 4h |  |  | 332 | MDSS080 | 5 days |  |
| 280 | 4.5.3.2 | TC: ITN facility distribution - CRUD |  | 10h | 2009-03-02 A | 2009-03-03 A | 279 | 100% | 2009-02-26 | 2009-02-27 | 10h |  |  |  | Sanika [40%] | 4h | 4h |  |  | 334 | MDSS030 | 5 days |  |
| 281 | 4.5.3.3 | TC: ITN community distribution - CRUD |  | 10h | 2009-03-03 A | 2009-03-04 A | 280 | 100% | 2009-02-27 | 2009-03-02 | 10h |  |  |  | Sanika [40%] | 4h | 4h |  |  | 335 | MDSS079 | 5 days |  |
| 282 | 4.5.3.4 | TC: ITN by household - CRUD |  | 10h | 2009-03-10 A | 2009-03-11 A | 281 | 100% | 2009-03-04 | 2009-03-05 | 10h |  |  | start no earlier than 2009-03-10 | Dave [40%] | 4h | 4h |  |  | 337 | MDSS082 | 5 days | 10 |
| 283 | 4.5.3.5 | TC: Change visibility of a GUI field |  | 8h | 2009-03-05 A | 2009-03-06 A |  | 100% |  |  |  |  |  |  | Sanika [40%] | 3.2h | 3.2h |  |  | 366 | MDSS117 |  |  |
| 284 | 4.5.3.6 | TC: calculate incidence |  | 8h | 2009-03-26 A | 2009-03-26 A | 275 | 100% | 2009-03-20 | 2009-03-23 | 5.71h |  |  |  | Saul [50%] | 4h | 4h |  |  | 317 | MDSS086 | 5 days |  |
| 285 | 4.5.3.7 | TC: Outbreak notification |  | 8h | 2009-03-27 A | 2009-03-27 A | 284 | 100% | 2009-03-23 | 2009-03-24 | 5.71h |  |  |  | Saul [50%] | 4h | 4h |  |  | 319 | MDSS124 | 5 days |  |
| 286 | 4.5.4 | **Intervention Planning** |  | 5.72h | 2009-04-06 A | 2009-04-06 A |  | 100% | 2009-03-31 | 2009-04-01 | 5.71h |  |  |  |  | 4h | 4h |  |  | 339 |  |  |  |
| 287 | 4.5.4.1 | TC: Intervention planning |  | 5.72h | 2009-04-06 A | 2009-04-06 A |  | 100% | 2009-03-31 | 2009-04-01 | 5.71h |  |  | start no earlier than 2009-04-06 | Dave [69.9%] | 4h | 4h |  |  | 340 | MDSS077 |  |  |
| 288 | 4.5.5 | **IPT** |  | 40h | 2009-02-13 A | 2009-02-20 A |  | 100% | 2009-02-13 | 2009-02-20 | 40h |  |  |  |  | 8h | 8h |  |  | 341 |  |  |  |
| 289 | 4.5.5.1 | TC: IPT aggregated - CRUD |  | 20h | 2009-02-13 A | 2009-02-17 A | 277 | 100% | 2009-02-13 | 2009-02-17 | 20h |  |  |  | Lars [20%] | 4h | 4h |  |  | 342 | MDSS069 |  |  |
| 290 | 4.5.5.2 | TC: IPT individual - CRUD |  | 20h | 2009-02-18 A | 2009-02-20 A | 289 | 100% | 2009-02-18 | 2009-02-20 | 20h |  |  |  | Lars [20%] | 4h | 4h |  |  | 343 | MDSS081 |  | 10 |
| 291 | 4.5.6 | **Stock Control** |  | 20h | 2009-02-20 A | 2009-02-24 A |  | 100% | 2009-02-20 | 2009-02-24 | 20h |  |  |  |  | 4h | 4h |  |  | 344 |  |  |  |
| 292 | 4.5.6.1 | TC: Stock Control |  | 20h | 2009-02-20 A | 2009-02-24 A | 290 | 100% | 2009-02-20 | 2009-02-24 | 20h |  |  |  | Lars [20%] | 4h | 4h |  |  | 345 | MDSS032 |  |  |
| 293 | 5 | Create standard queries and reports |  | 114.28h | 2009-05-11 | 2009-05-29 | 287 |  | 2009-04-08 | 2009-04-29 | 114.28h | 22.71d |  | start no earlier than 2009-05-10 | Marlize [70%] | 80h |  |  |  | 346 |  |  |  |
| 294 | 6 | Receive historical entomological data | milestone | 8h | 2009-03-27 | 2009-03-27 |  |  | 2009-05-04 | 2009-05-04 | 8h | 66d | 0d | start no earlier than 2009-03-27 | MRC | 8h |  |  |  | 347 |  |  |  |
| 295 | 7 | Import historical entomological data |  | 8h | 2009-03-30 | 2009-03-30 | 294 |  | 2009-05-05 | 2009-05-05 | 8h | 66d |  |  |  |  |  |  |  | 348 |  |  |  |
| 296 | 8 | Receive all historical IRS data | milestone | 8h | 2009-05-04 | 2009-05-04 |  |  | 2009-05-04 | 2009-05-04 | 8h | 40d | 0d | start no earlier than 2009-05-04 |  |  |  |  |  | 349 |  |  |  |
| 297 | 9 | Import all historical IRS data |  | 8h | 2009-05-05 | 2009-05-05 | 296 |  | 2009-05-05 | 2009-05-05 | 8h | 40d |  |  |  |  |  |  |  | 350 |  |  |  |
| 298 | 10 | Order MDSS Hardware | milestone | 0h | 2009-04-13 | 2009-04-13 |  |  | 2009-02-02 | 2009-02-02 | 0h | 57d |  | start no earlier than 2009-04-13 | Mike |  |  |  |  | 351 |  |  |  |
| 299 | 11 | Appoint MDSS Administrators | milestone | 0h | 2009-06-01 | 2009-06-01 |  |  | 2009-02-02 | 2009-02-02 | 0h | 22d |  | start no earlier than 2009-06-01 | Mike |  |  |  |  | 352 |  |  |  |
| 300 | 12 | Complete system translation into Portuguese |  | 20d | 2009-05-01 | 2009-05-28 |  |  | 2009-04-06 | 2009-05-01 | 20d | 23d |  | start no earlier than 2009-05-01 | Mike [5%] | 8h |  |  |  | 353 |  |  |  |
| 301 | 13 | Dev: Installation (minimal or full) |  | 40h | 2009-05-04 | 2009-05-11 | 208 |  | 2009-05-15 | 2009-05-22 | 40h | 8.75d | 0d |  | Justin | 40h |  | 4,600 | 4,600 | 354 | SYS12 |  |  |
| 302 | 14 | Complete Test and Fix Cycle |  | 20d | 2009-05-18 | 2009-06-12 |  |  | 2009-05-18 | 2009-06-12 | 20d | 10d | 0d | start no earlier than 2009-05-18 |  |  |  |  |  | 355 |  |  |  |
| 303 | 15 | Implementation planning |  | 16h | 2009-06-15 | 2009-06-16 | 302 |  | 2009-06-15 | 2009-06-16 | 16h | 10d |  |  |  | 16h |  |  |  | 356 |  |  |  |
| 304 | 16 | Project Buffer |  | 10d | 2009-06-16 | 2009-06-29 |  |  | 2009-06-16 | 2009-06-29 | 10d | 0d |  | start no earlier than 2009-06-16 |  | 80h |  |  |  | 357 |  |  |  |
| 305 | 17 | Ready for Pilot Roll-Out | milestone | 8h | 2009-06-30 | 2009-06-30 | 304 |  | 2009-06-30 | 2009-06-30 | 8h | 0d |  |  |  |  |  |  |  | 358 |  |  |  |
